# New Product Plan

Schedule from MS Project, 2020-08-03 to 2023-07-17.

## Calendars

- Standard: Mon-Fri 08:00-12:00, 13:00-17:00; Sat-Sun off.

## Resources

| Resource |
| --- |
| Management |
| Product Engineering |
| Project Manager |
| Marketing |
| Process Engineer |
| Manufacturing Engineer |
| Safety |
| Legal |
| Accounting |
| Customer |
| Purchasing |

## Schedule

| ID | WBS | Task | Type | Duration | Start | Finish | Predecessors | Total slack | Free slack | Resources | Work |
| --- | --- | --- | --- | --- | --- | --- | --- | --- | --- | --- | --- |
| 1 | 1 | **Initial New Product Screening Stage** |  | 1.8w | 2020-08-03 | 2020-08-13 |  | 0d |  |  | 72h |
| 2 | 1.1 | New product opportunity identified | milestone | 0w | 2020-08-03 | 2020-08-03 |  | 0d |  | Management; Product Engineering |  |
| 3 | 1.2 | Describe new product idea (1-page written disclosure) |  | 0.4w | 2020-08-03 | 2020-08-04 | 2 | 0d |  | Product Engineering | 16h |
| 4 | 1.3 | Gather information required for go/no-go decision |  | 1.2w | 2020-08-05 | 2020-08-12 | 3 | 0d |  | Product Engineering | 48h |
| 5 | 1.4 | Convene opportunity of screening committee (decision to pursue idea or not) |  | 0.2w | 2020-08-13 | 2020-08-13 | 4 | 0d |  | Product Engineering | 8h |
| 6 | 1.5 | Decision point - go/no-go to preliminary investigation | milestone | 0w | 2020-08-13 | 2020-08-13 | 5 | 0d |  | Management; Product Engineering |  |
| 7 | 2 | **Preliminary Investigation Stage** |  | 11.6w | 2020-08-14 | 2020-11-03 |  | 0d |  |  | 1216h |
| 8 | 2.1 | Assign resources to preliminary investigation |  | 0.2w | 2020-08-14 | 2020-08-14 | 6 | 0d |  | Management | 8h |
| 9 | 2.2 | Develop preliminary investigation plan |  | 1w | 2020-08-17 | 2020-08-21 | 8 | 5d | 0d | Product Engineering; Project Manager | 80h |
| 10 | 2.3 | Evaluate the market |  | 2w | 2020-08-17 | 2020-08-28 | 8 | 0d |  | Marketing | 80h |
| 11 | 2.4 | Analyze the competition |  | 1w | 2020-08-17 | 2020-08-21 | 8 | 5d | 0d | Marketing | 40h |
| 12 | 2.5 | **Technical Feasibility Analysis** |  | 4w | 2020-08-31 | 2020-09-25 |  | 0d |  |  | 160h |
| 13 | 2.5.1 | Produce lab scale product |  | 2w | 2020-08-31 | 2020-09-11 | 11, 9, 10 | 0d |  | Product Engineering | 80h |
| 14 | 2.5.2 | Evaluate internal product |  | 1w | 2020-09-14 | 2020-09-18 | 13 | 0d |  | Product Engineering | 40h |
| 15 | 2.5.3 | Identify production process steps required for manufacture |  | 1w | 2020-09-21 | 2020-09-25 | 14 | 0d |  | Process Engineer | 40h |
| 16 | 2.6 | Assess manufacturing capabilities |  | 2w | 2020-09-28 | 2020-10-09 | 15 | 0d |  | Product Engineering; Manufacturing Engineer | 160h |
| 17 | 2.7 | Determine safety issues |  | 2w | 2020-09-28 | 2020-10-09 | 16SS | 0d |  | Safety | 80h |
| 18 | 2.8 | Determine environmental issues |  | 2w | 2020-09-28 | 2020-10-09 | 17SS | 0d |  | Product Engineering; Legal | 160h |
| 19 | 2.9 | Review legal issues |  | 2w | 2020-09-28 | 2020-10-09 | 18SS | 0d |  | Legal; Project Manager | 160h |
| 20 | 2.10 | Perform financial evaluation |  | 2w | 2020-10-12 | 2020-10-23 | 19, 16, 17, 18 | 0d |  | Accounting | 80h |
| 21 | 2.11 | Develop risk analysis |  | 1w | 2020-10-26 | 2020-10-30 | 20 | 0d |  | Product Engineering; Project Manager | 80h |
| 22 | 2.12 | Draft initial development stage plan |  | 2w | 2020-10-12 | 2020-10-23 | 20SS | 5d | 0d | Product Engineering | 80h |
| 23 | 2.13 | Conduct preliminary stage review decision |  | 0.4w | 2020-11-02 | 2020-11-03 | 21, 22 | 0d |  | Management; Product Engineering; Project Manager | 48h |
| 24 | 2.14 | Decision point - go/no-go to development stage | milestone | 0w | 2020-11-03 | 2020-11-03 | 23 | 1d | 0d | Management; Project Manager |  |

| ID | WBS | Task | Type | Duration | Start | Finish | Predecessors | Total slack | Free slack | Resources | Work |
| --- | --- | --- | --- | --- | --- | --- | --- | --- | --- | --- | --- |
| 25 | 3 | **Development Stage** |  | 52.8w | 2020-11-04 | 2021-11-08 |  | 0d |  |  | 5408h |
| 26 | 3.1 | Assign resources to development stage plan |  | 0.2w | 2020-11-04 | 2020-11-04 | 23 | 0d |  | Management; Project Manager | 16h |
| 27 | 3.2 | **Market Evaluation** |  | 8w | 2020-11-05 | 2020-12-30 |  | 2d | 0d |  | 480h |
| 28 | 3.2.1 | Gather market information |  | 3w | 2020-11-05 | 2020-11-25 | 26, 24 | 2d | 0d | Product Engineering; Marketing | 240h |
| 29 | 3.2.2 | Identify and contact customer sample group |  | 1w | 2020-11-26 | 2020-12-02 | 28 | 12d | 0d | Marketing | 40h |
| 30 | 3.2.3 | Perform competitor analysis |  | 3w | 2020-11-26 | 2020-12-16 | 28 | 2d | 0d | Marketing | 120h |
| 31 | 3.2.4 | Redefine product requirements |  | 2w | 2020-12-17 | 2020-12-30 | 29, 30 | 2d | 0d | Product Engineering | 80h |
| 32 | 3.3 | **Technical Product Evaluation** |  | 40.8w | 2020-11-05 | 2021-08-17 |  | 0d |  |  | 3488h |
| 33 | 3.3.1 | Establish product characteristics (performance criteria) |  | 0.4w | 2020-11-05 | 2020-11-06 | 26, 24 | 0d |  | Product Engineering | 16h |
| 34 | 3.3.2 | Develop prototype process |  | 2w | 2020-11-09 | 2020-11-20 | 33 | 0d |  | Product Engineering | 80h |
| 35 | 3.3.3 | Produce prototype product |  | 5w | 2020-11-23 | 2020-12-25 | 34 | 0d |  | Product Engineering | 200h |
| 36 | 3.3.4 | Conduct internal product review |  | 1w | 2020-12-28 | 2021-01-01 | 35 | 0d |  | Management; Product Engineering | 80h |
| 37 | 3.3.5 | Document patent application process |  | 2w | 2020-11-09 | 2020-11-20 | 33 | 229d | 0d | Product Engineering | 80h |
| 38 | 3.3.6 | Conduct marketing/technical review |  | 18.4w | 2021-01-04 | 2021-05-11 | 36, 31 | 0d |  | Marketing; Product Engineering | 1472h |
| 39 | 3.3.7 | Redesign process (if necessary) |  | 2w | 2021-05-12 | 2021-05-25 | 38 | 0d |  | Product Engineering; Process Engineer | 160h |
| 40 | 3.3.8 | Modify prototype process |  | 3w | 2021-05-26 | 2021-06-15 | 39 | 0d |  | Process Engineer | 120h |
| 41 | 3.3.9 | Develop plan for customer product testing |  | 1w | 2021-06-16 | 2021-06-22 | 40 | 20d | 0d | Project Manager | 40h |
| 42 | 3.3.10 | Produce product for customer evaluation |  | 5w | 2021-06-16 | 2021-07-20 | 40 | 0d |  | Product Engineering; Marketing; Project Manager | 600h |
| 43 | 3.3.11 | Conduct preliminary manufacturing process review |  | 2w | 2021-07-21 | 2021-08-03 | 42 | 10d | 0d | Process Engineer; Manufacturing Engineer | 160h |
| 44 | 3.3.12 | Conduct customer evaluations of prototype product |  | 4w | 2021-07-21 | 2021-08-17 | 42, 41 | 0d |  | Product Engineering; Project Manager; Customer | 480h |
| 45 | 3.4 | **Concept Evaluation** |  | 11.4w | 2021-08-18 | 2021-11-04 |  | 0d |  |  | 1376h |
| 46 | 3.4.1 | Conduct marketing/technical review |  | 0.4w | 2021-08-18 | 2021-08-19 | 44, 43 | 0d |  | Management; Product Engineering; Marketing | 48h |
| 47 | 3.4.2 | Prepare preliminary manufacturing design |  | 4w | 2021-08-20 | 2021-09-16 | 46 | 0d |  | Product Engineering | 160h |
| 48 | 3.4.3 | Evaluate contract manufacturing option |  | 2w | 2021-09-17 | 2021-09-30 | 47 | 5d | 0d | Legal; Process Engineer | 160h |
| 49 | 3.4.4 | Review legal and patent considerations |  | 2w | 2021-08-20 | 2021-09-02 | 46, 37 | 35d | 0d | Management; Legal | 160h |
| 50 | 3.4.5 | Perform environmental review |  | 2w | 2021-09-17 | 2021-09-30 | 47 | 5d | 0d | Product Engineering | 80h |
| 51 | 3.4.6 | Conduct product safety review |  | 3w | 2021-08-20 | 2021-09-09 | 46 | 20d | 0d | Product Engineering; Safety | 240h |
| 52 | 3.4.7 | Perform evaluate/predict product cycle time |  | 3w | 2021-09-17 | 2021-10-07 | 47 | 0d |  | Product Engineering; Project Manager | 240h |
| 53 | 3.4.8 | Update financial analysis |  | 2w | 2021-10-08 | 2021-10-21 | 52, 51, 50, 56, 48 | 0d |  | Accounting | 80h |
| 54 | 3.4.9 | Risk analysis |  | 2w | 2021-10-22 | 2021-11-04 | 49, 53, 51 | 0d |  | Product Engineering | 80h |
| 55 | 3.4.10 | Review preliminary investigation criteria |  | 0.4w | 2021-10-22 | 2021-10-25 | 53 | 8d | 0d | Management; Product Engineering; Legal | 48h |
| 56 | 3.4.11 | Develop pilot stage plan |  | 1w | 2021-08-20 | 2021-08-26 | 47SS | 30d | 0d | Product Engineering; Project Manager | 80h |
| 57 | 3.5 | Conduct development stage review |  | 0.4w | 2021-11-05 | 2021-11-08 | 54, 55, 56 | 0d |  | Product Engineering; Project Manager; Process Engineer | 48h |
| 58 | 3.6 | Decision point - go/no-go to pilot stage | milestone | 0w | 2021-11-08 | 2021-11-08 | 57 | 0d |  | Management; Project Manager |  |

| ID | WBS | Task | Duration | Start | Finish | Predecessors | Total slack | Free slack | Resources | Work |
| --- | --- | --- | --- | --- | --- | --- | --- | --- | --- | --- |
| 59 | 4 | **Pilot Stage** | 23w | 2021-11-09 | 2022-04-18 |  | 0d |  |  | 1992h |
| 60 | 4.1 | Assign pilot stage resources | 0.2w | 2021-11-09 | 2021-11-09 | 57, 58 | 0d |  | Management; Project Manager | 16h |
| 61 | 4.2 | Secure customer commitment to participate in commercialization trials | 1w | 2021-11-10 | 2021-11-16 | 60 | 0d |  | Legal; Project Manager | 80h |
| 62 | 4.3 | **Trial Product Manufacture** | 14w | 2021-11-17 | 2022-02-22 |  | 0d |  |  | 1160h |
| 63 | 4.3.1 | Schedule/reserve pilot production facility | 1w | 2021-11-17 | 2021-11-23 | 61 | 0d |  | Project Manager | 40h |
| 64 | 4.3.2 | Resolve raw material and finish products logistics | 1w | 2021-11-24 | 2021-11-30 | 63 | 0d |  | Product Engineering; Project Manager | 80h |
| 65 | 4.3.3 | Review trial plan and requirements | 1w | 2021-11-17 | 2021-11-23 | 61 | 5d | 0d | Product Engineering; Project Manager | 80h |
| 66 | 4.3.4 | Start trial material production | 6w | 2021-12-01 | 2022-01-11 | 64, 65 | 0d |  | Product Engineering | 240h |
| 67 | 4.3.5 | Monitor customer trials | 4w | 2021-12-01 | 2021-12-28 | 66SS | 0d |  | Product Engineering | 160h |
| 68 | 4.3.6 | Review preliminary trial results | 2w | 2021-12-29 | 2022-01-11 | 67 | 0d |  | Product Engineering; Project Manager | 160h |
| 69 | 4.3.7 | Continue trial material production | 6w | 2022-01-12 | 2022-02-22 | 68 | 0d |  | Product Engineering | 240h |
| 70 | 4.3.8 | Complete customer trial monitoring | 4w | 2022-01-12 | 2022-02-08 | 69SS | 0d |  | Product Engineering | 160h |
| 71 | 4.4 | **Trial Analysis** | 9.8w | 2022-02-09 | 2022-04-18 |  | 0d |  |  | 736h |
| 72 | 4.4.1 | Confirm sales and marketing strategies | 1w | 2022-02-09 | 2022-02-15 | 70 | 0d |  | Marketing; Project Manager | 80h |
| 73 | 4.4.2 | Confirm product safety | 1w | 2022-02-09 | 2022-02-15 | 72SS | 0d |  | Project Manager; Safety | 80h |
| 74 | 4.4.3 | Reevaluate manufacturing processes | 3w | 2022-02-16 | 2022-03-08 | 72, 73 | 0d |  | Process Engineer | 120h |
| 75 | 4.4.4 | Develop commercialization plan | 3w | 2022-03-09 | 2022-03-29 | 74 | 0d |  | Product Engineering; Marketing | 240h |
| 76 | 4.4.5 | Review financials | 1w | 2022-03-30 | 2022-04-05 | 75 | 5d | 0d | Accounting | 40h |
| 77 | 4.4.6 | Review patent and legal issues | 2w | 2022-03-30 | 2022-04-12 | 75 | 0d |  | Legal | 80h |
| 78 | 4.4.7 | Assign commercialization leadership responsibility and resources | 0.4w | 2022-04-13 | 2022-04-14 | 76, 77 | 0d |  | Management; Project Manager | 32h |
| 79 | 4.4.8 | Pilot stage review and commercialization decision | 0.4w | 2022-04-15 | 2022-04-18 | 78 | 0d |  | Management; Product Engineering; Marketing; Process Engineer | 64h |
| 80 | 5 | **Commercialization Stage** | 39w | 2022-04-19 | 2023-01-16 |  | 0d |  |  | 3480h |
| 81 | 5.1 | **Product Manufacturing and Monitoring** | 33.6w | 2022-04-19 | 2022-12-08 |  | 0d |  |  | 2608h |
| 82 | 5.1.1 | Confirm product specification | 0.6w | 2022-04-19 | 2022-04-21 | 79 | 0d |  | Product Engineering; Manufacturing Engineer | 48h |
| 83 | 5.1.2 | Confirm customer specification acceptance and trial participation | 2w | 2022-04-22 | 2022-05-05 | 82 | 0d |  | Product Engineering; Project Manager | 160h |
| 84 | 5.1.3 | Develop manufacturing process requirements | 2w | 2022-05-06 | 2022-05-19 | 83 | 0d |  | Process Engineer; Manufacturing Engineer | 160h |
| 85 | 5.1.4 | Design and order new equipment | 6w | 2022-05-20 | 2022-06-30 | 84 | 0d |  | Product Engineering; Purchasing | 480h |
| 86 | 5.1.5 | Install and test new equipment or equipment modifications | 6w | 2022-07-01 | 2022-08-11 | 85 | 0d |  | Product Engineering; Manufacturing Engineer | 480h |
| 87 | 5.1.6 | Confirm manufacturing capabilities | 2w | 2022-08-12 | 2022-08-25 | 86 | 0d |  | Manufacturing Engineer | 80h |
| 88 | 5.1.7 | Develop and review production trial plan (resolve logistics issues) | 1w | 2022-08-26 | 2022-09-01 | 87 | 0d |  | Product Engineering; Project Manager | 80h |
| 89 | 5.1.8 | Start production of commercial product quantities | 8w | 2022-09-02 | 2022-10-27 | 88 | 0d |  | Product Engineering; Manufacturing Engineer | 640h |
| 90 | 5.1.9 | Monitor customer acceptance testing | 6w | 2022-10-28 | 2022-12-08 | 89 | 0d |  | Product Engineering; Project Manager | 480h |

| ID | WBS | Task | Duration | Start | Finish | Predecessors | Total slack | Free slack | Resources | Work |
| --- | --- | --- | --- | --- | --- | --- | --- | --- | --- | --- |
| 91 | 5.2 | **Commercialization Analysis** | 11.4w | 2022-10-28 | 2023-01-16 |  | 0d |  |  | 872h |
| 92 | 5.2.1 | Perform internal product testing | 3w | 2022-10-28 | 2022-11-17 | 89 | 15d | 0d | Product Engineering | 120h |
| 93 | 5.2.2 | Review production performance results | 2w | 2022-12-09 | 2022-12-22 | 90, 92 | 0d |  | Management; Product Engineering; Project Manager | 240h |
| 94 | 5.2.3 | Identify long term production requirements | 3w | 2022-12-23 | 2023-01-12 | 93 | 0d |  | Process Engineer; Manufacturing Engineer | 240h |
| 95 | 5.2.4 | Recalculate product economics | 2w | 2022-12-23 | 2023-01-05 | 93 | 5d | 0d | Product Engineering; Marketing; Accounting | 240h |
| 96 | 5.2.5 | Affirm decision to continue commercialization program | 0.4w | 2023-01-13 | 2023-01-16 | 95, 94 | 0d |  | Management; Project Manager | 32h |
| 97 | 6 | **Post Commercialization Review** | 26w | 2023-01-17 | 2023-07-17 |  | 0d |  |  | 3520h |
| 98 | 6.1 | Determine if product is meeting customer cost/performance expectations | 12w | 2023-01-17 | 2023-04-10 | 96 | 0d |  | Management; Project Manager | 960h |
| 99 | 6.2 | Determine if sales have met projections | 12w | 2023-01-17 | 2023-04-10 | 98SS | 10d | 0d | Management; Marketing | 960h |
| 100 | 6.3 | Determine if product is sustaining its position against competitive response | 6w | 2023-04-11 | 2023-05-22 | 99 | 10d | 0d | Management; Marketing | 480h |
| 101 | 6.4 | Evaluate manufacturing process for stability and cost effectiveness | 8w | 2023-04-11 | 2023-06-05 | 98 | 0d |  | Project Manager; Manufacturing Engineer | 640h |
| 102 | 6.5 | Determine if current economics are consistent with projected economics | 3w | 2023-06-06 | 2023-06-26 | 101, 100 | 0d |  | Marketing | 120h |
| 103 | 6.6 | Evaluate opportunities to expand product or product line | 3w | 2023-06-27 | 2023-07-17 | 102 | 0d |  | Management; Product Engineering; Marketing | 360h |
